# 项目计划图2.0

How a schedule from MS Project changed from version to version. A marks actual dates.

## Version 1 (saved 2023-10-26, file 项目计划图2.0.mpp)

Note of the change: 项目计划图2.0.mpp

| ID | WBS | Task | Duration | Start | Finish | Predecessors | Complete | Total float | Constraint |
| --- | --- | --- | --- | --- | --- | --- | --- | --- | --- |
| 1 | 1 | **第一阶段目标** | 35d? | 2023-10-11 A | 2023-11-14 |  | 29% |  |  |
| 2 | 1.1 | **项目计划** | 14d? | 2023-10-11 A | 2023-10-24 A |  | 100% |  |  |
| 3 |  | 项目计划初稿 | 4d | 2023-10-11 A | 2023-10-14 A |  | 100% |  | finish no earlier than 2023-10-14 |
| 4 |  | 制作PPT | 3d | 2023-10-15 A | 2023-10-17 A | 3 | 100% |  | finish no earlier than 2023-10-17 |
| 5 |  | 项目计划书审核 | 0d | 2023-10-15 A | 2023-10-15 A | 3 | 100% |  | must finish on 2023-10-15 |
| 6 |  | 第一版审核 | 0d | 2023-10-17 A | 2023-10-17 A |  | 100% |  | finish no earlier than 2023-10-17 |
| 7 |  | 项目计划书修改 | 4d | 2023-10-18 A | 2023-10-21 A | 6 | 100% |  | finish no earlier than 2023-10-21 |
| 8 |  | 内容更新 | 2d | 2023-10-22 A | 2023-10-23 A | 6, 7 | 100% |  | finish no earlier than 2023-10-23 |
| 9 |  | PPT修改 | 3d | 2023-10-22 A | 2023-10-24 A | 7 | 100% |  | start no earlier than 2023-10-22 |
| 10 |  | 最后审核 | 0d | 2023-10-24 A | 2023-10-24 A |  | 100% |  |  |
| 11 | 1.2 | **可行性分析** | 7d | 2023-10-25 | 2023-10-31 |  |  |  |  |
| 12 |  | 可行性分析初稿 | 4d | 2023-10-25 | 2023-10-28 | 10 |  | 0d | finish no later than 2023-10-28 |
| 13 |  | 项目计划书修改 | 4d | 2023-10-25 | 2023-10-28 | 10 |  | 3d | start no later than 2023-10-28 |
| 14 |  | 制作PPT | 3d | 2023-10-29 | 2023-10-31 | 12 |  | 52d | finish no earlier than 2023-10-31 |
| 15 |  | 内容细化与更新 | 5d | 2023-10-25 | 2023-10-29 |  |  | 58d |  |
| 16 |  | 可行性审核 | 0d | 2023-10-31 | 2023-10-31 | 14 |  | 68d | finish no earlier than 2023-10-31 |
| 17 | 1.3 | **需求分析** | 14d? | 2023-11-01 | 2023-11-14 |  |  |  |  |
| 18 |  | 需求分析初稿 | 4d | 2023-11-01 | 2023-11-04 |  |  | 1d | finish no earlier than 2023-11-04 |
| 19 |  | 可行性分析修改 | 4d | 2023-11-01 | 2023-11-04 | 16 |  | 52d |  |
| 20 |  | 制作PPT | 3d | 2023-11-05 | 2023-11-07 | 18 |  | 1d | finish no earlier than 2023-11-07 |
| 21 |  | 内容更新 | 5d | 2023-11-05 | 2023-11-09 | 18, 16, 19 |  | 47d | finish no earlier than 2023-11-05 |
| 22 |  | 第一版审核 | 0d | 2023-11-07 | 2023-11-07 | 20 |  | 1d | finish no earlier than 2023-11-07 |
| 23 |  | 需求分析更改 | 4d | 2023-11-08 | 2023-11-11 | 22 |  | 1d | finish no earlier than 2023-11-11 |
| 24 |  | 审核再优化 | 0d | 2023-11-12 | 2023-11-12 | 23 |  | 0d | must finish on 2023-11-12 |
| 25 |  | 修改PPT | 2d | 2023-11-13 | 2023-11-14 | 24 |  | 42d | finish no earlier than 2023-11-14 |
| 26 |  | 内容更新 | 2d | 2023-11-12 | 2023-11-13 | 22, 23 |  | 43d | finish no earlier than 2023-11-13 |
| 27 |  | 最后审核 | 0d | 2023-11-14 | 2023-11-14 |  |  | 59d | start no earlier than 2023-11-14 |
| 28 | 2 | **第二阶段目标** | 42d? | 2023-11-15 | 2023-12-26 |  |  |  |  |
| 29 | 2.1 | **总体设计** | 7d? | 2023-11-15 | 2023-11-21 |  |  |  |  |
| 30 |  | 总体设计初稿 | 4d | 2023-11-15 | 2023-11-18 |  |  | 35d | finish no earlier than 2023-11-18 |
| 31 |  | 需求分析修改 | 5d | 2023-11-15 | 2023-11-19 | 27 |  | 58d | finish no earlier than 2023-11-19 |
| 32 |  | 内容更新 | 2d | 2023-11-19 | 2023-11-20 | 30, 27 |  |  |  |
| 33 |  | 制作PPT | 3d | 2023-11-19 | 2023-11-21 | 30 |  | 35d | finish no earlier than 2023-11-21 |
| 34 |  | 审核 | 0d | 2023-11-15 | 2023-11-15 |  |  | 56d |  |
| 35 | 2.2 | **详细设计** | 7d | 2023-11-22 | 2023-11-28 |  |  |  |  |
| 36 |  | 详细设计初稿 | 4d | 2023-11-22 | 2023-11-25 |  |  | 28d | finish no earlier than 2023-11-25 |
| 37 |  | 设计图的绘画 | 4d | 2023-11-22 | 2023-11-25 |  |  | 28d | finish no earlier than 2023-11-25 |
| 38 |  | 内容更新 | 3d | 2023-11-26 | 2023-11-28 | 34, 36, 37 |  | 28d | finish no earlier than 2023-11-28 |
| 39 |  | 制作PPT | 3d | 2023-11-26 | 2023-11-28 | 36, 37 |  | 28d | finish no earlier than 2023-11-28 |
| 40 |  | 审核 | 0d | 2023-11-28 | 2023-11-28 |  |  | 42d | finish no earlier than 2023-11-28 |
| 41 | 2.3 | **项目设计** | 7d | 2023-11-29 | 2023-12-05 |  |  |  |  |
| 42 |  | 整体设计修改 | 4d | 2023-11-29 | 2023-12-02 | 34 |  | 42d | finish no earlier than 2023-12-02 |
| 43 |  | 详细设计修改 | 4d | 2023-11-29 | 2023-12-02 | 40 |  | 21d | start no earlier than 2023-11-29 |
| 44 |  | 内容更新 | 3d | 2023-12-03 | 2023-12-05 | 40, 42, 43 |  | 21d | finish no earlier than 2023-12-05 |
| 45 |  | 制作翻转PPT | 3d | 2023-12-03 | 2023-12-05 | 42, 43 |  |  |  |
| 46 |  | 审核 | 0d | 2023-12-05 | 2023-12-05 |  |  | 40d | start no earlier than 2023-12-05 |
| 47 | 2.4 | **实现** | 28d? | 2023-11-15 | 2023-12-12 |  |  |  |  |
| 48 |  | 数据收集 | 5d | 2023-11-15 | 2023-11-19 |  |  | 30d | finish no earlier than 2023-11-19 |
| 49 |  | 数据标注 | 7d | 2023-11-20 | 2023-11-26 | 48 |  | 30d | finish no earlier than 2023-11-26 |
| 50 |  | 设计和训练分类模型 | 7d | 2023-11-20 | 2023-11-26 |  |  |  |  |
| 51 |  | 设计和训练推荐模型 | 7d | 2023-11-20 | 2023-11-26 |  |  | 30d | finish no earlier than 2023-11-26 |
| 52 |  | 设计前端 | 12d | 2023-11-15 | 2023-11-26 |  |  |  |  |
| 53 |  | 融合和优化前后端 | 4d | 2023-11-27 | 2023-11-30 | 50, 51, 52 |  | 14d | finish no earlier than 2023-11-30 |
| 54 |  | 测试和修补 | 5d | 2023-12-01 | 2023-12-05 | 53 |  | 14d | finish no earlier than 2023-12-05 |
| 55 |  | 编写代码清单 | 4d | 2023-12-06 | 2023-12-09 | 54 |  |  |  |
| 56 |  | 编写测试用例 | 4d | 2023-12-06 | 2023-12-09 | 54 |  |  |  |
| 57 |  | 内容更新 | 3d | 2023-12-10 | 2023-12-12 | 46, 54, 55, 56 |  | 14d | finish no earlier than 2023-12-12 |
| 58 |  | 制作翻转PPT2 | 3d | 2023-12-10 | 2023-12-12 | 55, 56 |  | 14d | finish no earlier than 2023-12-12 |
| 59 |  | 审核 | 0d | 2023-12-12 | 2023-12-12 |  |  | 29d | start no earlier than 2023-12-12 |
| 60 | 2.5 | **维护** | 7d? | 2023-12-13 | 2023-12-19 |  |  |  |  |
| 61 |  | 编写测试报告 | 4d | 2023-12-13 | 2023-12-16 | 55, 56, 59 |  | 28d | finish no earlier than 2023-12-16 |
| 62 |  | 系统维护 | 7d | 2023-12-13 | 2023-12-19 | 59 |  | 28d | finish no earlier than 2023-12-19 |
| 63 |  | 内容更新 | 3d | 2023-12-17 | 2023-12-19 |  |  | 28d | finish no earlier than 2023-12-19 |
| 64 |  | 制作PPT | 3d | 2023-12-17 | 2023-12-19 | 61 |  |  |  |
| 65 |  | 审核 | 0d | 2023-12-19 | 2023-12-19 |  |  | 22d | start no earlier than 2023-12-19 |
| 66 | 2.6 | **项目测试评审** | 7d? | 2023-12-20 | 2023-12-26 |  |  |  |  |
| 67 |  | 测试报告修正 | 4d | 2023-12-20 | 2023-12-23 | 65 |  | 21d | finish no earlier than 2023-12-23 |
| 68 |  | 系统更新维护 | 7d | 2023-12-20 | 2023-12-26 | 65 |  | 21d | finish no earlier than 2023-12-26 |
| 69 |  | 内容更新 | 3d | 2023-12-24 | 2023-12-26 |  |  | 21d | finish no earlier than 2023-12-26 |
| 70 |  | 修改PPT | 3d | 2023-12-24 | 2023-12-26 | 67 |  | 21d | finish no earlier than 2023-12-26 |

| ID | WBS | Task | Duration | Start | Finish | Predecessors | Total float | Constraint |
| --- | --- | --- | --- | --- | --- | --- | --- | --- |
| 71 |  | 审核 | 0d | 2023-12-26 | 2023-12-26 |  | 11d | start no earlier than 2023-12-26 |
| 72 | 3 | **第三阶段目标** | 21d? | 2023-12-27 | 2024-01-16 |  |  |  |
| 73 | 3.1 | **总结** | 14d? | 2023-12-27 | 2024-01-09 |  |  |  |
| 74 |  | 测试报告修改 | 4d | 2023-12-27 | 2023-12-30 | 71 | 10d | finish no earlier than 2023-12-30 |
| 75 |  | 内容更新 | 14d | 2023-12-27 | 2024-01-09 |  | 7d | finish no earlier than 2024-01-09 |
| 76 |  | 编写总结报告 | 7d | 2023-12-27 | 2024-01-02 |  |  |  |
| 77 |  | 总评审PPT | 7d | 2024-01-03 | 2024-01-09 | 74, 76 | 7d | finish no earlier than 2024-01-09 |
| 78 |  | 审核 | 0d | 2024-01-09 | 2024-01-09 |  | 1d | start no earlier than 2024-01-09 |
| 79 | 3.2 | **总结修改** | 7d? | 2024-01-10 | 2024-01-16 |  |  |  |
| 80 |  | 总结报告修改 | 4d | 2024-01-10 | 2024-01-13 | 78 | 0d | finish no earlier than 2024-01-13 |
| 81 |  | 内容更新 | 3d | 2024-01-14 | 2024-01-16 | 80 | 0d | finish no earlier than 2024-01-16 |
| 82 |  | 修改PPT | 3d | 2024-01-14 | 2024-01-16 | 80 | 0d |  |
| 83 |  | 最后审核 | 0d | 2024-01-16 | 2024-01-16 |  | 0d | finish no earlier than 2024-01-16 |

## Version 2 (saved 2023-11-02, file 项目计划图3.0.mpp)

Note of the change: 项目计划图3.0.mpp

Last finish stays 2024-01-16. Complete tasks 8 → 13.

Added:

| ID | Task | Duration | Start | Finish | Constraint | Resources |
| --- | --- | --- | --- | --- | --- | --- |
| 22 | 绘图 | 4d | 2023-11-01 | 2023-11-04 | finish no earlier than 2023-11-04 | 侯兢喆 |

Changed:

| ID | Task | Start | Finish | Duration | Complete | Total float | Predecessors | Other |
| --- | --- | --- | --- | --- | --- | --- | --- | --- |
| 1 | **第一阶段目标** |  |  |  | 29% → 53% |  |  |  |
| 11 | **可行性分析** | 2023-10-25 A | 2023-10-31 A |  | 0% → 100% |  |  |  |
| 12 | 可行性分析初稿 | 2023-10-25 A | 2023-10-28 A |  | 0% → 100% | 0d → none |  |  |
| 13 | 项目计划书修改 | 2023-10-25 A | 2023-10-28 A |  | 0% → 100% | 3d → none |  |  |
| 14 | 制作PPT | 2023-10-29 A | 2023-10-31 A |  | 0% → 100% | 52d → none |  |  |
| 15 | 内容细化与更新 | 2023-10-25 A | 2023-10-29 A |  | 0% → 100% | 58d → none |  |  |
| 16 | 可行性审核 | 2023-10-31 A | 2023-10-31 A |  | 0% → 100% | 68d → none |  |  |
| 18 | 需求分析初稿 |  |  |  |  | 1d → 73d |  | resources 侯兢喆 → 朱化宇 |
| 19 | 可行性研究过程123 |  |  |  |  | 52d → 73d | 16 → none | was named 可行性分析修改 |
| 20 | 可行性研究过程456 | 2023-11-05 → 2023-11-01 (-4d) | 2023-11-07 → 2023-11-04 (-3d) | 3d → 4d |  | 1d → 73d | 18 → none | was named 制作PPT; constraint finish no earlier than 2023-11-07 → finish no earlier than 2023-11-04; resources 朱化宇 → 韩晨烨 |
| 21 | 可行性研究过程78 | 2023-11-05 → 2023-11-01 (-4d) | 2023-11-09 → 2023-11-04 (-5d) | 5d → 4d |  | 47d → 73d | 18, 16, 19 → none | was named 内容更新; constraint finish no earlier than 2023-11-05 → finish no earlier than 2023-11-04; resources 韩晨烨 → 阮星榜 |
| 23 | 第一版审核 |  |  |  |  |  | 20 → none |  |

## Version 3 (saved 2023-11-07, file 项目计划图3.0.mpp)

Note of the change: 修改

Last finish stays 2024-01-16. Complete tasks 13 → 18.

Changed:

| ID | Task | Start | Finish | Complete | Total float | Other |
| --- | --- | --- | --- | --- | --- | --- |
| 1 | **第一阶段目标** |  |  | 53% → 87% |  |  |
| 17 | **需求分析** | 2023-11-01 A |  | 0% → 71% |  |  |
| 18 | 需求分析初稿 | 2023-11-01 A | 2023-11-04 A | 0% → 100% | 73d → none | resources 朱化宇 → 侯兢喆 |
| 19 | 可行性研究过程123 | 2023-11-01 A | 2023-11-04 A | 0% → 100% | 73d → none |  |
| 20 | 可行性研究过程456 | 2023-11-01 A | 2023-11-04 A | 0% → 100% | 73d → none |  |
| 21 | 可行性研究过程78 | 2023-11-01 A | 2023-11-04 A | 0% → 100% | 73d → none |  |
| 22 | 绘图 | 2023-11-01 A | 2023-11-04 A | 0% → 100% | 73d → none |  |

## Version 4 (saved 2023-11-14, file 项目计划图4.0.mpp)

Note of the change: 修改

Last finish stays 2024-01-16. Complete tasks 18 → 20.

Changed:

| ID | Task | Start | Finish | Duration | Complete | Total float | Other |
| --- | --- | --- | --- | --- | --- | --- | --- |
| 1 | **第一阶段目标** |  |  |  | 87% → 93% |  |  |
| 11 | **可行性分析** |  | 2023-10-31 A → 2023-11-04 A (+4d) | 7d → 11d |  |  |  |
| 20 | **需求分析** |  |  |  | 71% → 75% |  |  |
| 23 | 第一版审核 | 2023-11-07 A | 2023-11-07 A |  | 0% → 100% | 1d → none |  |
| 24 | 可行性分析更改 | 2023-11-08 A | 2023-11-11 A |  | 0% → 100% | 1d → none | was named 需求分析更改 |
| 27 | 设计界面原型 |  |  |  |  |  | was named 内容更新 |

## Version 5 (saved 2023-11-14, file 项目计划图4_0.mpp)

Note of the change: 修改

Last finish stays 2024-01-16. Complete tasks 20 → 22.

Added:

| ID | Task | Duration | Start | Finish | Constraint | Resources |
| --- | --- | --- | --- | --- | --- | --- |
| 27 | 用户访谈 | 5d | 2023-11-08 | 2023-11-12 | finish no earlier than 2023-11-12 | 阮星榜 |

Removed: 26 修改PPT

Changed:

| ID | Task | Start | Finish | Duration | Complete | Total float | Other |
| --- | --- | --- | --- | --- | --- | --- | --- |
| 1 | **第一阶段目标** |  |  |  | 93% → 99% |  |  |
| 11 | **可行性分析** |  | 2023-11-04 A → 2023-11-11 A (+7d) | 11d → 18d |  |  |  |
| 21 | **需求分析** |  |  |  | 75% → 99% |  |  |
| 25 | 召开会议及记录 | 2023-11-12 A | 2023-11-12 A |  | 0% → 100% | 0d → none | was named 审核再优化 |
| 26 | 设计界面原型 | 2023-11-12 A | 2023-11-13 A |  | 0% → 100% | 64d → none |  |

## Version 6 (saved 2023-11-28, file 项目计划图5.0.mpp)

Note of the change: 甘特图/项目计划图5.0.mpp

Last finish stays 2024-01-16.

Changed:

| ID | Task | Other |
| --- | --- | --- |
| 32 | 总体设计12 | was named 需求分析修改 |
| 33 | 总体设计34 | was named 内容更新 |
| 34 | 总体设计56 | was named 制作PPT |
| 37 | 详细设计引言+模块1 | was named 详细设计初稿 |
| 38 | 详细设计模块45 | was named 设计图的绘画 |
| 39 | 详细设计模块23 | was named 内容更新 |
| 40 | 详细设计模块67 | was named 制作PPT |

## Version 7 (saved 2023-12-05, file 项目计划图5.0.mpp)

Note of the change: Merge branch 'main' of https://github.com/JakerHXR/Software-manage

Last finish stays 2024-01-16. Complete tasks 22 → 38.

Changed:

| ID | Task | Start | Finish | Complete | Total float | Other |
| --- | --- | --- | --- | --- | --- | --- |
| 1 | **第一阶段目标** |  | 2023-11-14 A | 99% → 100% |  |  |
| 21 | **需求分析** |  | 2023-11-14 A | 99% → 100% |  |  |
| 28 | 最后审核 | 2023-11-14 A | 2023-11-14 A | 0% → 100% | 59d → none |  |
| 29 | **第二阶段目标** | 2023-11-15 A |  | 0% → 31% |  |  |
| 30 | **总体设计** | 2023-11-15 A | 2023-11-21 A | 0% → 100% |  |  |
| 31 | 总体设计初稿 | 2023-11-15 A | 2023-11-18 A | 0% → 100% | 56d → none |  |
| 32 | 总体设计12 | 2023-11-15 A | 2023-11-19 A | 0% → 100% | 58d → none |  |
| 33 | 总体设计34 | 2023-11-19 A | 2023-11-20 A | 0% → 100% |  |  |
| 34 | 总体设计56 | 2023-11-19 A | 2023-11-21 A | 0% → 100% | 56d → none |  |
| 35 | 审核 | 2023-11-15 A | 2023-11-15 A | 0% → 100% | 56d → none |  |
| 36 | **详细设计** | 2023-11-22 A | 2023-11-28 A | 0% → 100% |  |  |
| 37 | 详细设计引言+模块1 | 2023-11-22 A | 2023-11-25 A | 0% → 100% | 49d → none |  |
| 38 | 详细设计模块45 | 2023-11-22 A | 2023-11-25 A | 0% → 100% | 49d → none |  |
| 39 | 详细设计模块23 | 2023-11-26 A | 2023-11-28 A | 0% → 100% | 49d → none |  |
| 40 | 详细设计模块67 | 2023-11-26 A | 2023-11-28 A | 0% → 100% | 49d → none |  |
| 41 | 审核 | 2023-11-28 A | 2023-11-28 A | 0% → 100% | 42d → none |  |
| 42 | **项目设计** | 2023-11-29 A | 2023-12-05 A | 0% → 100% |  |  |
| 43 | 详细设计修改优化 | 2023-11-29 A | 2023-12-02 A | 0% → 100% | 42d → none | was named 整体设计修改 |
| 44 | 绘图 | 2023-11-29 A | 2023-12-02 A | 0% → 100% | 42d → none | was named 详细设计修改 |
| 45 | 总体设计更新优化 | 2023-12-03 A | 2023-12-05 A | 0% → 100% | 42d → none | was named 内容更新 |
| 46 | 界面、数据库设计等 | 2023-12-03 A | 2023-12-05 A | 0% → 100% |  | was named 制作翻转PPT |
| 47 | 审核 | 2023-12-05 A | 2023-12-05 A | 0% → 100% | 40d → none |  |

## Version 8 (saved 2023-12-19, file 项目计划图7.0.mpp)

Note of the change: new

Last finish stays 2024-01-16. Complete tasks 38 → 43.

Changed:

| ID | Task | Start | Finish | Duration | Complete | Total float | Predecessors | Other |
| --- | --- | --- | --- | --- | --- | --- | --- | --- |
| 29 | **第二阶段目标** |  |  |  | 31% → 51% |  |  |  |
| 48 | **实现** | 2023-11-15 A | 2023-12-12 → 2023-12-26 (+14d) | 28d? → 42d | 0% → 47% |  |  |  |
| 49 | 数据收集 | 2023-11-15 A |  |  | 0% → 50% | 51d → 3.5d |  |  |
| 50 | 数据标注 | 2023-11-20 A |  |  | 0% → 50% |  |  |  |
| 51 | 设计和训练分类模型 | 2023-11-20 A | 2023-11-26 A |  | 0% → 100% |  |  |  |
| 52 | 设计和训练推荐模型 | 2023-11-20 A | 2023-11-26 A |  | 0% → 100% | 31d → none |  |  |
| 53 | 设计前端 | 2023-11-15 A | 2023-11-26 A |  | 0% → 100% |  |  |  |
| 54 | 融合和优化前后端 | 2023-11-27 A |  |  | 0% → 50% | 31d → 28d |  |  |
| 55 | 测试和修补 |  | 2023-12-05 → 2023-12-19 (+14d) | 5d → 19d |  | 31d → 28d |  | constraint finish no earlier than 2023-12-05 → finish no earlier than 2023-12-19 |
| 56 | 编写代码清单 |  | 2023-12-09 → 2023-12-19 (+10d) | 4d → 14d |  |  | 55 → none |  |
| 57 | 编写测试用例 |  |  |  |  |  | 55 → none |  |
| 58 | 内容更新 | 2023-12-10 → 2023-12-20 A (+10d) | 2023-12-12 → 2023-12-22 A (+10d) |  | 0% → 100% | 35d → none |  |  |
| 59 | 制作翻转PPT2 | 2023-12-10 → 2023-12-20 A (+10d) | 2023-12-12 → 2023-12-22 A (+10d) |  | 0% → 100% | 35d → none |  |  |
| 61 | **维护** |  | 2023-12-19 → 2023-12-26 (+7d) | 7d? → 14d |  |  |  |  |
| 62 | 编写测试报告 | 2023-12-13 → 2023-12-20 (+7d) | 2023-12-16 → 2023-12-23 (+7d) |  |  | 28d → 21d |  |  |

## Version 9 (saved 2023-12-25, file 项目计划图7.0.mpp)

Note of the change: 修改

Last finish stays 2024-01-16. Complete tasks 43 → 60.

Added:

| ID | Task | Duration | Start | Finish | Constraint | Resources |
| --- | --- | --- | --- | --- | --- | --- |
| 52 | 设置个性化需求筛选 | 7d | 2023-11-20 A | 2023-11-26 A | start no earlier than 2023-11-20 | 侯兢喆 |
| 54 | 设置tag筛选 | 7d | 2023-11-16 A | 2023-11-22 A |  | 阮星榜 |
| 64 | 修改测试计划 | 4d | 2023-12-13 A | 2023-12-16 A | finish no earlier than 2023-12-16 | 侯兢喆 |

Removed: 70 内容更新

Changed:

| ID | Task | Start | Finish | Duration | Complete | Total float | Predecessors | Other |
| --- | --- | --- | --- | --- | --- | --- | --- | --- |
| 29 | **第二阶段目标** |  | 2023-12-26 A |  | 51% → 100% |  |  |  |
| 48 | **实现** |  |  | 42d → 42d? | 47% → 100% |  |  |  |
| 49 | 数据收集 |  | 2023-11-19 A |  | 50% → 100% | 3.5d → none |  |  |
| 50 | 数据标注 |  | 2023-11-26 A |  | 50% → 100% | 51d → none |  |  |
| 51 | 设计和训练分类模型 | 2023-11-20 A → 2023-11-20 | 2023-11-26 A → 2023-11-26 |  | 100% → 0% |  |  |  |
| 53 | 设计和训练推荐模型 | 2023-11-20 A → 2023-11-20 | 2023-11-26 A → 2023-11-26 |  | 100% → 0% | none → 51d |  |  |
| 56 | 优化前后端 |  | 2023-11-30 A |  | 50% → 100% | 28d → none |  | was named 融合和优化前后端 |
| 57 | 测试和修补 | 2023-12-01 A | 2023-12-19 A |  | 0% → 100% | 28d → none |  |  |
| 58 | 编写代码清单 | 2023-12-06 A | 2023-12-19 A |  | 0% → 100% |  |  |  |
| 59 | 编写测试计划 | 2023-12-06 A | 2023-12-09 A |  | 0% → 100% |  |  | was named 编写测试用例 |
| 60 | 测试已完成的api |  |  |  |  |  |  | was named 内容更新 |
| 62 | 审核 | 2023-12-12 A | 2023-12-12 A |  | 0% → 100% | 29d → none |  |  |
| 63 | **维护** | 2023-12-13 A | 2023-12-26 → 2023-12-19 A (-7d) | 14d → 7d | 0% → 100% |  |  |  |
| 65 | 完善前端 | 2023-12-13 A | 2023-12-19 A |  | 0% → 100% | 28d → none | 62 → none | was named 系统维护 |
| 66 | 测试完善功能 | 2023-12-17 A | 2023-12-19 A |  | 0% → 100% | 28d → none |  | was named 内容更新 |
| 67 | 完善后端 | 2023-12-17 A | 2023-12-19 A |  | 0% → 100% |  | 72 → none | was named 制作PPT |
| 68 | 审核 | 2023-12-19 A | 2023-12-19 A |  | 0% → 100% | 22d → none |  |  |
| 69 | **项目测试评审** | 2023-12-20 A | 2023-12-26 A |  | 0% → 100% |  |  |  |
| 70 | 完成剩余测试 | 2023-12-20 A | 2023-12-23 A |  | 0% → 100% | 21d → none |  | was named 测试报告修正 |
| 71 | 前后端融合 | 2023-12-20 A | 2023-12-26 A |  | 0% → 100% | 21d → none |  | was named 系统更新维护 |
| 72 | 编写测试报告 | 2023-12-20 → 2023-12-24 A (+4d) | 2023-12-23 → 2023-12-26 A (+3d) | 4d → 3d | 0% → 100% | 21d → none | 58, 59, 62 → none | constraint finish no earlier than 2023-12-16 → finish no earlier than 2023-12-26; resources 侯兢喆 → 朱化宇 |
| 73 | 完善项目计划及其他 | 2023-12-24 A | 2023-12-26 A |  | 0% → 100% | 21d → none |  | was named 修改PPT |
| 74 | 审核 | 2023-12-26 A | 2023-12-26 A |  | 0% → 100% | 11d → none |  |  |

## Version 10 (saved 2023-12-26, file 项目计划图7.0.mpp)

Last finish stays 2024-01-16. Complete tasks 60 → 59.

Changed:

| ID | Task | Finish | Complete | Total float |
| --- | --- | --- | --- | --- |
| 29 | **第二阶段目标** | 2023-12-26 A → 2023-12-26 | 100% → 98% |  |
| 69 | **项目测试评审** | 2023-12-26 A → 2023-12-26 | 100% → 79% |  |
| 71 | 前后端融合 | 2023-12-26 A → 2023-12-26 | 100% → 50% | none → 21d |

## Version 11 (saved 2024-01-06, file 项目计划图7.0.mpp)

Note of the change: 修改

Last finish stays 2024-01-16. Complete tasks 59 → 65.

Changed:

| ID | Task | Start | Finish | Complete | Total float | Other |
| --- | --- | --- | --- | --- | --- | --- |
| 29 | **第二阶段目标** |  | 2023-12-26 A | 98% → 100% |  |  |
| 69 | **项目测试评审** |  | 2023-12-26 A | 79% → 100% |  |  |
| 71 | 前后端融合 |  | 2023-12-26 A | 50% → 100% | 21d → none |  |
| 75 | **第三阶段目标** | 2023-12-27 A |  | 0% → 76% |  |  |
| 76 | **总结** | 2023-12-27 A | 2024-01-09 A | 0% → 100% |  |  |
| 77 | 测试报告修改 | 2023-12-27 A | 2023-12-30 A | 0% → 100% | 10d → none |  |
| 78 | 软件维护 | 2023-12-27 A | 2024-01-09 A | 0% → 100% | 7d → none | was named 内容更新 |
| 79 | 编写总结报告 | 2023-12-27 A | 2024-01-02 A | 0% → 100% |  |  |
| 80 | 程序优化 | 2024-01-03 A | 2024-01-09 A | 0% → 100% | 7d → none | was named 总评审PPT |
| 81 | 审核 | 2024-01-09 A | 2024-01-09 A | 0% → 100% | 1d → none |  |
| 84 | 软件维护 |  |  |  |  | was named 内容更新 |
| 85 | 程序优化 |  |  |  |  | was named 修改PPT |

## Version 12 (saved 2024-01-16, file 项目计划图7.0.mpp)

Note of the change: 修改

Last finish stays 2024-01-16. Complete tasks 65 → 69.

Changed:

| ID | Task | Start | Finish | Complete | Total float |
| --- | --- | --- | --- | --- | --- |
| 75 | **第三阶段目标** |  | 2024-01-16 A | 76% → 100% |  |
| 82 | **总结修改** | 2024-01-10 A | 2024-01-16 A | 0% → 100% |  |
| 83 | 总结报告修改 | 2024-01-10 A | 2024-01-13 A | 0% → 100% | 0d → none |
| 84 | 软件维护 | 2024-01-14 A | 2024-01-16 A | 0% → 100% | 0d → none |
| 85 | 程序优化 | 2024-01-14 A | 2024-01-16 A | 0% → 100% | 0d → none |
| 86 | 最后审核 | 2024-01-16 A | 2024-01-16 A | 0% → 100% | 0d → none |
